Schedule from MS Project, 2016-09-05 to 2016-12-26.

## Calendars

- Standard: Mon-Fri 08:00-12:00, 13:00-17:00; Sat-Sun off.

## Schedule

| ID | WBS | Task | Type | Duration | Start | Finish | Predecessors | Total slack | Free slack | Constraint |
| --- | --- | --- | --- | --- | --- | --- | --- | --- | --- | --- |
| 1 | 1 | **Bookaholic Social Network** |  | 81d? | 2016-09-05 08:00 | 2016-12-26 17:00 |  | 0d |  |  |
| 2 | 1.1 | **Initial** |  | 9d | 2016-09-05 08:00 | 2016-09-15 17:00 |  | 5d | 0d |  |
| 3 | 1.1.1 | Form up team roles |  | 0.5d | 2016-09-05 08:00 | 2016-09-05 12:00 |  | 7.5d | 0d | start no earlier than 2016-09-05 08:00 |
| 4 | 1.1.2 | Select project idea |  | 0.5d | 2016-09-05 13:00 | 2016-09-05 17:00 | 3 | 7.5d | 0d | start no earlier than 2016-09-05 08:00 |
| 5 | 1.1.3 | **Develop project idea** |  | 6d | 2016-09-06 08:00 | 2016-09-13 17:00 | 4 | 7d | 0d |  |
| 6 | 1.1.3.1 | Define Project Scope |  | 0.5d | 2016-09-06 08:00 | 2016-09-06 12:00 |  | 7.5d | 0d | start no earlier than 2016-09-06 08:00 |
| 7 | 1.1.3.2 | Define Project Features |  | 0.5d | 2016-09-06 08:00 | 2016-09-06 12:00 | 6SS | 7.5d | 0.5d | start no earlier than 2016-09-06 08:00 |
| 8 | 1.1.3.3 | Create Project Introduction |  | 1d | 2016-09-07 08:00 | 2016-09-07 17:00 | 7 | 10d | 0d | start no earlier than 2016-09-07 08:00 |
| 9 | 1.1.3.4 | Review Project Introduction |  | 0.5d | 2016-09-08 08:00 | 2016-09-08 12:00 | 8 | 10d | 0d |  |
| 10 | 1.1.3.5 | Update Project Introduction |  | 0.5d | 2016-09-08 13:00 | 2016-09-08 17:00 | 9 | 10d |  | start no earlier than 2016-09-08 08:00 |
| 11 | 1.1.3.6 | Create Mockup (Part 1) |  | 5d | 2016-09-07 08:00 | 2016-09-13 17:00 | 7 | 7d |  | start no earlier than 2016-09-07 08:00 |
| 12 | 1.1.4 | **Environment** |  | 1d | 2016-09-06 08:00 | 2016-09-06 17:00 | 5SS | 12d |  |  |
| 13 | 1.1.4.1 | Install tools & environment |  | 0.5d | 2016-09-06 08:00 | 2016-09-06 12:00 |  | 12d | 0d | start no earlier than 2016-09-06 08:00 |
| 14 | 1.1.4.2 | Training using tools & environment |  | 0.5d | 2016-09-06 13:00 | 2016-09-06 17:00 | 13 | 12d |  | start no earlier than 2016-09-06 08:00 |
| 15 | 1.1.5 | **Technology Research (Part 1)** |  | 4d | 2016-09-09 08:00 | 2016-09-14 17:00 |  | 5d | 0d |  |
| 16 | 1.1.5.1 | Study .net MVC5 |  | 4d | 2016-09-09 08:00 | 2016-09-14 17:00 |  | 5d | 0d | start no earlier than 2016-09-09 08:00 |
| 17 | 1.1.5.2 | Study Bootstrap, HTML5, CSS3 |  | 4d | 2016-09-09 08:00 | 2016-09-14 17:00 | 16SS | 5d |  | start no earlier than 2016-09-09 08:00 |
| 18 | 1.1.6 | Kick-off meeting |  | 1d | 2016-09-15 08:00 | 2016-09-15 17:00 | 15 | 5d | 0d |  |
| 19 | 1.1.7 | End of initiation phase | milestone | 0d | 2016-09-15 17:00 | 2016-09-15 17:00 | 18 | 5d |  | start no earlier than 2016-09-15 08:00 |
| 20 | 1.2 | **Implement 1** |  | 19d? | 2016-09-16 08:00 | 2016-10-12 17:00 | 2 | 0d |  |  |
| 21 | 1.2.1 | **Requirement** |  | 1d | 2016-09-16 08:00 | 2016-09-16 17:00 |  | 5d | 0d |  |
| 22 | 1.2.1.1 | Define User Requirement (Part 1) |  | 1d | 2016-09-16 08:00 | 2016-09-16 17:00 |  | 5d |  | start no earlier than 2016-09-16 08:00 |
| 23 | 1.2.2 | **Analysis & design** |  | 13d | 2016-09-19 08:00 | 2016-10-06 08:00 | 21 | 5d |  |  |
| 24 | 1.2.2.1 | **Q&A Sheet** |  | 2d | 2016-09-19 08:00 | 2016-09-20 17:00 |  | 15.5d | 0d |  |
| 25 | 1.2.2.1.1 | Create Q&A Sheet |  | 0.5d | 2016-09-19 08:00 | 2016-09-19 12:00 |  | 15.5d | 0d | start no earlier than 2016-09-19 08:00 |
| 26 | 1.2.2.1.2 | Review Q&A Sheet |  | 0.3d | 2016-09-19 13:00 | 2016-09-19 15:24 | 25 | 15.5d | 0d | start no earlier than 2016-09-19 08:00 |
| 27 | 1.2.2.1.3 | Update Q&A Sheet |  | 0.2d | 2016-09-19 15:24 | 2016-09-19 17:00 | 26 | 15.5d | 0d | start no earlier than 2016-09-19 08:00 |
| 28 | 1.2.2.1.4 | Translate Q&A Sheet to Japanese |  | 1d | 2016-09-20 08:00 | 2016-09-20 17:00 | 27 | 15.5d | 0d | start no earlier than 2016-09-20 08:00 |
| 29 | 1.2.2.1.5 | Complete Q&A Sheet | milestone | 0d | 2016-09-20 17:00 | 2016-09-20 17:00 | 28 | 15.5d |  |  |

| ID | WBS | Task | Type | Duration | Start | Finish | Predecessors | Total slack | Free slack | Constraint |
| --- | --- | --- | --- | --- | --- | --- | --- | --- | --- | --- |
| 30 | 1.2.2.2 | **Create Project Plan** |  | 2d | 2016-09-19 08:00 | 2016-09-20 17:00 | 24SS | 5d | 0d |  |
| 31 | 1.2.2.2.1 | Create PP Review Checklist |  | 0.5d | 2016-09-19 08:00 | 2016-09-19 12:00 |  | 5d | 0d |  |
| 32 | 1.2.2.2.2 | Create Project Plan in MS Word |  | 1d | 2016-09-19 08:00 | 2016-09-19 17:00 | 31SS | 6d |  |  |
| 33 | 1.2.2.2.3 | Create Project Schedule in .mpp file |  | 2d | 2016-09-19 08:00 | 2016-09-20 17:00 | 31SS | 5d |  |  |
| 34 | 1.2.2.2.4 | Create CM Plan |  | 1d | 2016-09-19 08:00 | 2016-09-19 17:00 | 31SS | 5d | 0d |  |
| 35 | 1.2.2.2.5 | Review Project Plan, CM Plan, Schedule |  | 0.5d | 2016-09-20 08:00 | 2016-09-20 12:00 | 34 | 5d | 0d |  |
| 36 | 1.2.2.2.6 | Update Project Plan, CM Plan, Schedule |  | 0.5d | 2016-09-20 13:00 | 2016-09-20 17:00 | 35 | 5d | 0d | start no earlier than 2016-09-16 08:00 |
| 37 | 1.2.2.2.7 | Complete Project Plan | milestone | 0d | 2016-09-20 17:00 | 2016-09-20 17:00 | 36 | 5d |  | start no earlier than 2016-09-20 08:00 |
| 38 | 1.2.2.3 | **User Requirement Specification (Part 1)** |  | 2d | 2016-09-21 08:00 | 2016-09-23 08:00 | 30 | 13d | 0d |  |
| 39 | 1.2.2.3.1 | Create SRS Review Checklist (Part 1) |  | 1d | 2016-09-21 08:00 | 2016-09-21 17:00 |  | 13d | 0d | start no earlier than 2016-09-16 08:00 |
| 40 | 1.2.2.3.2 | Create User Requirement Specification (Part 1) |  | 1d | 2016-09-21 08:00 | 2016-09-21 17:00 | 39SS | 13d | 0d | start no earlier than 2016-09-16 08:00 |
| 41 | 1.2.2.3.3 | Review User Requirement Specification (Part 1) |  | 0.5d | 2016-09-22 08:00 | 2016-09-22 12:00 | 40 | 13d | 0d |  |
| 42 | 1.2.2.3.4 | Update User Requirement Specification (Part 1) |  | 0.5d | 2016-09-22 13:00 | 2016-09-22 17:00 | 41 | 13d | 0d | start no earlier than 2016-09-15 08:00 |
| 43 | 1.2.2.3.5 | Complete User Requirement Specification (Part 1) | milestone | 0d | 2016-09-23 08:00 | 2016-09-23 08:00 | 42 | 13d |  | start no earlier than 2016-09-23 08:00 |
| 44 | 1.2.2.4 | Create Progress Report 1 (Part 1) |  | 1d | 2016-09-23 08:00 | 2016-09-23 17:00 | 38 | 13d | 1d |  |
| 45 | 1.2.2.5 | Submit Report 1 (Part 1) | milestone | 0d | 2016-09-27 08:00 | 2016-09-27 08:00 | 44 | 12d |  | start no earlier than 2016-09-27 08:00 |
| 46 | 1.2.2.6 | **Design** |  | 5.5d | 2016-09-28 08:00 | 2016-10-05 12:00 | 30 | 0d |  |  |
| 47 | 1.2.2.6.1 | Create Architecture Design |  | 3d | 2016-09-28 08:00 | 2016-09-30 17:00 |  | 0d |  | start no earlier than 2016-09-28 08:00 |
| 48 | 1.2.2.6.2 | Create Mockup (Part 2) |  | 5d | 2016-09-28 08:00 | 2016-10-04 17:00 | 47SS | 6d |  | start no earlier than 2016-09-28 08:00 |
| 49 | 1.2.2.6.3 | Database Design |  | 3d | 2016-09-28 08:00 | 2016-09-30 17:00 | 47SS | 0d |  | start no earlier than 2016-09-28 08:00 |
| 50 | 1.2.2.6.4 | Class/Component Design |  | 2d | 2016-10-03 08:00 | 2016-10-04 17:00 | 49 | 5d | 0d |  |
| 51 | 1.2.2.6.5 | Create Design Review Checklist |  | 0.5d | 2016-10-05 08:00 | 2016-10-05 12:00 | 50 | 5d | 0d |  |
| 52 | 1.2.2.7 | Create Progress Report 2 (Part 1) |  | 0.5d | 2016-10-05 13:00 | 2016-10-05 17:00 | 51 | 5d | 0d |  |
| 53 | 1.2.2.8 | Create Coding Checklist (Part 1) |  | 0.5d | 2016-09-21 08:00 | 2016-09-21 12:00 | 24 | 15.5d |  |  |
| 54 | 1.2.2.9 | Submit Report 2 (Part 1) | milestone | 0d | 2016-10-06 08:00 | 2016-10-06 08:00 | 52 | 5d |  | start no earlier than 2016-10-06 08:00 |

| ID | WBS | Task | Duration | Start | Finish | Predecessors | Total slack | Free slack | Constraint |
| --- | --- | --- | --- | --- | --- | --- | --- | --- | --- |
| 55 | 1.2.3 | **Development** | 6d? | 2016-10-03 08:00 | 2016-10-10 17:00 | 49 | 0d |  |  |
| 56 | 1.2.3.1 | **Technology Research (Part 2)** | 0.5d | 2016-10-03 08:00 | 2016-10-03 12:00 |  | 0d |  |  |
| 57 | 1.2.3.1.1 | Google API | 0.5d | 2016-10-03 08:00 | 2016-10-03 12:00 |  | 0d |  | start no earlier than 2016-09-14 08:00 |
| 58 | 1.2.3.1.2 | Facebook API | 0.5d | 2016-10-03 08:00 | 2016-10-03 12:00 | 57SS | 0d |  |  |
| 59 | 1.2.3.2 | Create Unit Test Checklist (Part 1) | 0.5d | 2016-10-03 08:00 | 2016-10-03 12:00 | 56SS | 7.5d |  |  |
| 60 | 1.2.3.3 | **Code Screen Module** | 5d? | 2016-10-03 08:00 | 2016-10-07 17:00 | 56SS | 3d |  |  |
| 61 | 1.2.3.3.1 | "Admin Management" Screen | 1d | 2016-10-03 08:00 | 2016-10-03 17:00 |  | 3d | 0d |  |
| 62 | 1.2.3.3.2 | "Đăng Nhập"Screen | 1d? | 2016-10-03 08:00 | 2016-10-03 17:00 | 61SS | 3d | 0d |  |
| 63 | 1.2.3.3.3 | "Trang Chủ"Screen | 2d | 2016-10-04 08:00 | 2016-10-05 17:00 | 62 | 3d | 0d | start no earlier than 2016-09-19 08:00 |
| 64 | 1.2.3.3.4 | "Trang cá nhân"Screen | 1d? | 2016-10-06 08:00 | 2016-10-06 17:00 | 63 | 3d | 0d | start no earlier than 2016-09-19 08:00 |
| 65 | 1.2.3.3.5 | "Tác giả"Screen | 1d | 2016-10-07 08:00 | 2016-10-07 17:00 | 64 | 3d |  |  |
| 66 | 1.2.3.4 | **Code & Unit Test** | 5.5d? | 2016-10-03 13:00 | 2016-10-10 17:00 | 56 | 0d |  |  |
| 67 | 1.2.3.4.1 | **Admin Module (Part 1)** | 1d | 2016-10-03 13:00 | 2016-10-04 12:00 |  | 0d |  |  |
| 68 | 1.2.3.4.1.1 | Book Management Feature | 0.5d | 2016-10-03 13:00 | 2016-10-03 17:00 |  | 0d |  |  |
| 69 | 1.2.3.4.1.2 | Publisher Management Feature | 0.5d | 2016-10-03 13:00 | 2016-10-03 17:00 | 68SS | 0.5d |  |  |
| 70 | 1.2.3.4.1.3 | Slide Management Feature | 1d | 2016-10-03 13:00 | 2016-10-04 12:00 | 68SS | 0d |  |  |
| 71 | 1.2.3.4.2 | **Account Management Module** | 4.5d? | 2016-10-04 13:00 | 2016-10-10 17:00 | 67 | 0d |  |  |
| 72 | 1.2.3.4.2.1 | Account Register Function | 2d | 2016-10-04 13:00 | 2016-10-06 12:00 |  | 0d |  |  |
| 73 | 1.2.3.4.2.2 | LogIn/LogOut Feature | 1.5d | 2016-10-06 13:00 | 2016-10-07 17:00 | 72 | 0d |  |  |
| 74 | 1.2.3.4.2.3 | Edit Profile Function | 0.5d? | 2016-10-10 08:00 | 2016-10-10 12:00 | 73 | 0d |  |  |
| 75 | 1.2.3.4.2.4 | Reset Password Function | 1d | 2016-10-10 08:00 | 2016-10-10 17:00 | 74SS | 0d |  |  |
| 76 | 1.2.3.4.3 | **System Module (Part 1)** | 2d | 2016-10-06 13:00 | 2016-10-10 12:00 | 73SS | 0.5d |  |  |
| 77 | 1.2.3.4.3.1 | Send Mail Feature | 2d | 2016-10-06 13:00 | 2016-10-10 12:00 |  | 0.5d |  |  |
| 78 | 1.2.4 | **Testing** | 4d | 2016-10-03 13:00 | 2016-10-07 12:00 | 66SS | 2.5d | 0d |  |
| 79 | 1.2.4.1 | Create Test Plan (Part 1) | 0.5d | 2016-10-03 13:00 | 2016-10-03 17:00 |  | 4.5d | 0d |  |
| 80 | 1.2.4.2 | Create Test Plan Checklist (Part 1) | 0.5d | 2016-10-04 08:00 | 2016-10-04 12:00 | 79 | 4.5d | 0d |  |

| ID | WBS | Task | Type | Duration | Start | Finish | Predecessors | Total slack | Free slack | Constraint |
| --- | --- | --- | --- | --- | --- | --- | --- | --- | --- | --- |
| 81 | 1.2.4.3 | **Writing Test Case (Part 1)** |  | 1d | 2016-10-04 13:00 | 2016-10-05 12:00 | 80 | 4.5d | 0d |  |
| 82 | 1.2.4.3.1 | Create Admin Module Test Case (Part 1) |  | 0.5d | 2016-10-04 13:00 | 2016-10-04 17:00 |  | 4.5d | 0d |  |
| 83 | 1.2.4.3.2 | Create Account Management Module Test Case (Part 1) |  | 0.5d | 2016-10-05 08:00 | 2016-10-05 12:00 | 82 | 4.5d | 0d |  |
| 84 | 1.2.4.3.3 | Create System Module Test Case (Part 1) |  | 0.5d | 2016-10-05 08:00 | 2016-10-05 12:00 | 83SS | 4.5d |  |  |
| 85 | 1.2.4.4 | Create Test Case Checklist (Part 1) |  | 0.5d | 2016-10-04 13:00 | 2016-10-04 17:00 | 81SS | 2.5d | 0d |  |
| 86 | 1.2.4.5 | Execute Test (Part 1) |  | 2d | 2016-10-05 08:00 | 2016-10-06 17:00 | 85 | 2.5d | 0d |  |
| 87 | 1.2.4.6 | Create Test Report (Part 1) |  | 0.5d | 2016-10-07 08:00 | 2016-10-07 12:00 | 86 | 2.5d | 0d |  |
| 88 | 1.2.4.7 | Testing Part 1 Complete | milestone | 0d | 2016-10-07 12:00 | 2016-10-07 12:00 | 87 | 2.5d |  | start no earlier than 2016-10-07 08:00 |
| 89 | 1.2.5 | Create Progress Report 3 (Part 1) |  | 0.5d | 2016-10-05 13:00 | 2016-10-05 17:00 | 79, 81 | 5d | 0d |  |
| 90 | 1.2.6 | Submit Report 3 (Part 1) | milestone | 0d | 2016-10-05 17:00 | 2016-10-05 17:00 | 89 | 5d | 0d |  |
| 91 | 1.2.7 | Submit Report 4 (Part 1) | milestone | 0d | 2016-10-05 17:00 | 2016-10-05 17:00 | 90 | 5d |  |  |
| 92 | 1.2.8 | Create Quality Report (Part 1) |  | 1d? | 2016-10-07 13:00 | 2016-10-10 12:00 | 78 | 2.5d |  |  |
| 93 | 1.2.9 | Create Progress Report (Part 1) |  | 1d? | 2016-10-11 08:00 | 2016-10-11 17:00 | 66 | 0d |  |  |
| 94 | 1.2.10 | Submit Report 5 (Part 1) | milestone | 0d | 2016-10-11 17:00 | 2016-10-11 17:00 | 93 | 0d |  |  |
| 95 | 1.2.11 | Evaluation |  | 1d? | 2016-10-12 08:00 | 2016-10-12 17:00 | 94 | 0d |  |  |
| 96 | 1.2.12 | End Implement 1 | milestone | 0d | 2016-10-12 17:00 | 2016-10-12 17:00 | 95 | 0d |  |  |
| 97 | 1.3 | **Implement 2** |  | 29.5d? | 2016-10-13 08:00 | 2016-11-23 12:00 | 20 | 0d |  |  |
| 98 | 1.3.1 | **Requirement** |  | 1d? | 2016-10-13 08:00 | 2016-10-13 17:00 |  | 0d |  |  |
| 99 | 1.3.1.1 | Define User Requirement (Part 2) |  | 1d? | 2016-10-13 08:00 | 2016-10-13 17:00 |  | 0d |  |  |
| 100 | 1.3.2 | **Analysis & design** |  | 3d? | 2016-10-14 08:00 | 2016-10-18 17:00 | 98 | 0d |  |  |
| 101 | 1.3.2.1 | **User Requirement Specification (Part 2)** |  | 2d? | 2016-10-14 08:00 | 2016-10-18 08:00 |  | 0d |  |  |
| 102 | 1.3.2.1.1 | Create SRS Review Checklist (Part 2) |  | 1d? | 2016-10-14 08:00 | 2016-10-14 17:00 |  | 0d |  |  |
| 103 | 1.3.2.1.2 | Create User Requirement Sepecification (Part 2) |  | 1d? | 2016-10-14 08:00 | 2016-10-14 17:00 | 102SS | 0d |  |  |
| 104 | 1.3.2.1.3 | Review User Requirement Specification (Part 2) |  | 0.5d | 2016-10-17 08:00 | 2016-10-17 12:00 | 103 | 0d |  |  |
| 105 | 1.3.2.1.4 | Update User Requirement Specification (Part 2) |  | 0.5d? | 2016-10-17 13:00 | 2016-10-17 17:00 | 104 | 0d |  |  |
| 106 | 1.3.2.1.5 | Complete User Requirement Specification (Part 2) | milestone | 0d | 2016-10-18 08:00 | 2016-10-18 08:00 | 105 | 0d |  | start no earlier than 2016-10-18 08:00 |
| 107 | 1.3.2.2 | Create Coding Checklist (Part 2) |  | 0.5d | 2016-10-18 08:00 | 2016-10-18 12:00 | 101 | 0.5d |  |  |
| 108 | 1.3.2.3 | Create Progress Report 1 (Part 2) |  | 0.5d | 2016-10-18 08:00 | 2016-10-18 12:00 | 101 | 0d |  |  |
| 109 | 1.3.2.4 | Submit Report 1 (Part 2) | milestone | 0d | 2016-10-18 12:00 | 2016-10-18 12:00 | 108 | 0.5d |  |  |
| 110 | 1.3.2.5 | Create Progress Report 2 (Part 2) |  | 0.5d | 2016-10-18 13:00 | 2016-10-18 17:00 | 108 | 0d |  |  |
| 111 | 1.3.2.6 | Submit Report 2 (Part 2) | milestone | 0d | 2016-10-18 17:00 | 2016-10-18 17:00 | 110 | 0d |  |  |

| ID | WBS | Task | Duration | Start | Finish | Predecessors | Total slack | Free slack | Constraint |
| --- | --- | --- | --- | --- | --- | --- | --- | --- | --- |
| 112 | 1.3.3 | **Development** | 23.5d? | 2016-10-19 08:00 | 2016-11-21 12:00 | 100 | 0d |  |  |
| 113 | 1.3.3.1 | **Technology Research (Part 3)** | 2d | 2016-10-19 08:00 | 2016-10-20 17:00 |  | 0d |  |  |
| 114 | 1.3.3.1.1 | .NET SignalR | 2d | 2016-10-19 08:00 | 2016-10-20 17:00 |  | 0d |  |  |
| 115 | 1.3.3.2 | Create Unit Test Checklist (Part 2) | 0.5d | 2016-10-21 08:00 | 2016-10-21 12:00 | 113 | 0d |  |  |
| 116 | 1.3.3.3 | **Code Screen Module** | 1d | 2016-10-19 08:00 | 2016-10-19 17:00 | 113SS | 24.5d |  |  |
| 117 | 1.3.3.3.1 | "Group Management" Screen | 1d | 2016-10-19 08:00 | 2016-10-19 17:00 | 61 | 24.5d |  |  |
| 118 | 1.3.3.4 | **Code & Unit Test** | 21d? | 2016-10-21 13:00 | 2016-11-21 12:00 | 115 | 0d |  |  |
| 119 | 1.3.3.4.1 | **Common Module** | 2d? | 2016-10-21 13:00 | 2016-10-25 12:00 |  | 0d |  |  |
| 120 | 1.3.3.4.1.1 | User Search Function | 2d | 2016-10-21 13:00 | 2016-10-25 12:00 |  | 0d |  |  |
| 121 | 1.3.3.4.1.2 | User Rate Book Function | 2d | 2016-10-21 13:00 | 2016-10-25 12:00 | 120SS | 0d |  |  |
| 122 | 1.3.3.4.1.3 | Suggest Book/Author Function | 1d? | 2016-10-21 13:00 | 2016-10-24 12:00 | 120SS | 1d |  |  |
| 123 | 1.3.3.4.2 | **Recommendation Management Module** | 12d | 2016-10-25 13:00 | 2016-11-10 12:00 | 119 | 0d |  |  |
| 124 | 1.3.3.4.2.1 | Management Post Feature | 10d | 2016-10-25 13:00 | 2016-11-08 12:00 |  | 0d |  |  |
| 125 | 1.3.3.4.2.2 | Management Comment Feature | 5d | 2016-11-01 13:00 | 2016-11-08 12:00 | 124FF | 0d |  | start no earlier than 2016-10-06 08:00 |
| 126 | 1.3.3.4.2.3 | Manage Reply-Comment Function | 2d | 2016-11-08 13:00 | 2016-11-10 12:00 | 125 | 0d |  |  |
| 127 | 1.3.3.4.3 | **Group Management Module** | 3d? | 2016-11-10 13:00 | 2016-11-15 12:00 | 123 | 0d |  |  |
| 128 | 1.3.3.4.3.1 | Group Manage Feature | 1d | 2016-11-10 13:00 | 2016-11-11 12:00 |  | 0d |  |  |
| 129 | 1.3.3.4.3.2 | Manage Group Member Feature | 1d? | 2016-11-11 13:00 | 2016-11-14 12:00 | 128 | 0d |  |  |
| 130 | 1.3.3.4.3.3 | Manage Group Post Feature | 1d? | 2016-11-14 13:00 | 2016-11-15 12:00 | 129 | 0d |  |  |
| 131 | 1.3.3.4.4 | **Interaction Management Module** | 4d | 2016-11-15 13:00 | 2016-11-21 12:00 | 127 | 0d |  |  |
| 132 | 1.3.3.4.4.1 | Interact With Other Accounts Feature | 4d | 2016-11-15 13:00 | 2016-11-21 12:00 |  | 0d |  |  |
| 133 | 1.3.3.4.4.2 | Interact With Group Feature | 4d | 2016-11-15 13:00 | 2016-11-21 12:00 | 132SS | 0d |  |  |
| 134 | 1.3.4 | **Testing** | 5d | 2016-10-21 13:00 | 2016-10-28 12:00 | 118SS | 17d | 0d |  |
| 135 | 1.3.4.1 | Create Test Plan (Part 2) | 0.5d | 2016-10-21 13:00 | 2016-10-21 17:00 |  | 18d | 0d |  |
| 136 | 1.3.4.2 | Create Test Plan Checklist (Part 2) | 0.5d | 2016-10-24 08:00 | 2016-10-24 12:00 | 135 | 18d | 0d |  |

| ID | WBS | Task | Type | Duration | Start | Finish | Predecessors | Total slack | Free slack |
| --- | --- | --- | --- | --- | --- | --- | --- | --- | --- |
| 137 | 1.3.4.3 | **Writing Test Case (Part 2)** |  | 3d | 2016-10-24 13:00 | 2016-10-27 12:00 | 136 | 18d | 0d |
| 138 | 1.3.4.3.1 | Create Common Module Test Case |  | 0.5d | 2016-10-24 13:00 | 2016-10-24 17:00 |  | 18d | 0d |
| 139 | 1.3.4.3.2 | Create Recommendation Management Module Test Case |  | 1d | 2016-10-25 08:00 | 2016-10-25 17:00 | 138 | 18d | 0d |
| 140 | 1.3.4.3.3 | Create Group Management Module Test Case |  | 1d | 2016-10-26 08:00 | 2016-10-26 17:00 | 139 | 18d | 0d |
| 141 | 1.3.4.3.4 | Create Interaction Management Module Test Case |  | 0.5d | 2016-10-27 08:00 | 2016-10-27 12:00 | 140 | 18d |  |
| 142 | 1.3.4.4 | Create Test Case Checklist (Part 2) |  | 2d | 2016-10-24 13:00 | 2016-10-26 12:00 | 137SS | 17d | 0d |
| 143 | 1.3.4.5 | Execute Test (Part 2) |  | 1.5d | 2016-10-26 13:00 | 2016-10-27 17:00 | 142 | 17d | 0d |
| 144 | 1.3.4.6 | Create Test Report (Part 2) |  | 0.5d | 2016-10-28 08:00 | 2016-10-28 12:00 | 143 | 17d | 0d |
| 145 | 1.3.4.7 | Testing Part 2 Complete | milestone | 0d | 2016-10-28 12:00 | 2016-10-28 12:00 | 144 | 17d |  |
| 146 | 1.3.5 | Create Progress Report 3 (Part 2) |  | 0.5d | 2016-10-27 13:00 | 2016-10-27 17:00 | 135, 137 | 18.5d | 0d |
| 147 | 1.3.6 | Submit Report 3 (Part 2) | milestone | 0d | 2016-10-27 17:00 | 2016-10-27 17:00 | 146 | 18.5d | 0d |
| 148 | 1.3.7 | Submit Report 4 (Part 2) | milestone | 0d | 2016-10-27 17:00 | 2016-10-27 17:00 | 147 | 18.5d |  |
| 149 | 1.3.8 | Create Quality Report (Part 2) |  | 1d? | 2016-10-28 13:00 | 2016-10-31 12:00 | 134 | 17d |  |
| 150 | 1.3.9 | Create Progress Report 5 (Part 2) |  | 1d? | 2016-11-21 13:00 | 2016-11-22 12:00 | 118 | 0d |  |
| 151 | 1.3.10 | Submit Report 5 (Part 2) | milestone | 0d | 2016-11-22 12:00 | 2016-11-22 12:00 | 150 | 0d |  |
| 152 | 1.3.11 | Evaluation |  | 1d? | 2016-11-22 13:00 | 2016-11-23 12:00 | 151 | 0d |  |
| 153 | 1.3.12 | End Implement 2 | milestone | 0d | 2016-11-23 12:00 | 2016-11-23 12:00 | 152 | 0d |  |
| 154 | 1.4 | **Implement 3** |  | 15d? | 2016-11-23 13:00 | 2016-12-14 12:00 | 97 | 0d |  |
| 155 | 1.4.1 | **Requirement** |  | 1d? | 2016-11-23 13:00 | 2016-11-24 12:00 |  | 0d |  |
| 156 | 1.4.1.1 | Define User Requirement (Part 3) |  | 1d? | 2016-11-23 13:00 | 2016-11-24 12:00 |  | 0d |  |
| 157 | 1.4.2 | **Analysis & design** |  | 2.5d? | 2016-11-24 13:00 | 2016-11-28 17:00 | 155 | 0d |  |
| 158 | 1.4.2.1 | **User Requirement Specification (Part 3)** |  | 1.5d | 2016-11-24 13:00 | 2016-11-25 17:00 |  | 0d |  |
| 159 | 1.4.2.1.1 | Create SRS Review Checklist (Part 3) |  | 0.5d | 2016-11-24 13:00 | 2016-11-24 17:00 |  | 0d |  |
| 160 | 1.4.2.1.2 | Create User Requirement Sepecification (Part 3) |  | 0.5d | 2016-11-24 13:00 | 2016-11-24 17:00 | 159SS | 0d |  |
| 161 | 1.4.2.1.3 | Review User Requirement Specification (Part 3) |  | 0.5d | 2016-11-25 08:00 | 2016-11-25 12:00 | 160 | 0d |  |
| 162 | 1.4.2.1.4 | Update User Requirement Specification (Part 3) |  | 0.5d | 2016-11-25 13:00 | 2016-11-25 17:00 | 161 | 0d |  |
| 163 | 1.4.2.1.5 | Complete User Requirement Specification (Part 3) | milestone | 0d | 2016-11-25 17:00 | 2016-11-25 17:00 | 162 | 0d |  |
| 164 | 1.4.2.2 | Create Coding Checklist (Part 3) |  | 0.5d | 2016-11-28 08:00 | 2016-11-28 12:00 | 158 | 0.5d |  |
| 165 | 1.4.2.3 | Create Progress Report 1 (Part 3) |  | 0.5d | 2016-11-28 08:00 | 2016-11-28 12:00 | 158 | 0d |  |
| 166 | 1.4.2.4 | Submit Report 1 (Part 3) | milestone | 0d | 2016-11-28 12:00 | 2016-11-28 12:00 | 165 | 0.5d |  |
| 167 | 1.4.2.5 | Create Progress Report 2 (Part 3) |  | 1d? | 2016-11-28 08:00 | 2016-11-28 17:00 | 165SS | 0d |  |
| 168 | 1.4.2.6 | Submit Report 2 (Part 3) | milestone | 0d | 2016-11-28 17:00 | 2016-11-28 17:00 | 167 | 0d |  |

| ID | WBS | Task | Type | Duration | Start | Finish | Predecessors | Total slack | Free slack | Constraint |
| --- | --- | --- | --- | --- | --- | --- | --- | --- | --- | --- |
| 169 | 1.4.3 | **Development** |  | 10d? | 2016-11-29 08:00 | 2016-12-12 17:00 | 157 | 0d |  |  |
| 170 | 1.4.3.1 | **Technology Research (Part 3)** |  | 1d? | 2016-11-29 08:00 | 2016-11-29 17:00 |  | 10.5d | 0d |  |
| 171 | 1.4.3.1.1 | Generate chart in .NET |  | 1d? | 2016-11-29 08:00 | 2016-11-29 17:00 |  | 10.5d |  |  |
| 172 | 1.4.3.2 | Create Unit Test Checklist (Part 3) |  | 1d? | 2016-11-29 08:00 | 2016-11-29 17:00 | 170SS | 0d |  |  |
| 173 | 1.4.3.3 | **Code & Unit Test** |  | 9d | 2016-11-30 08:00 | 2016-12-12 17:00 | 172 | 0d |  |  |
| 174 | 1.4.3.3.1 | **System Module (Part 2)** |  | 3d | 2016-11-30 08:00 | 2016-12-02 17:00 |  | 0d |  |  |
| 175 | 1.4.3.3.1.1 | Statistic Feature |  | 3d | 2016-11-30 08:00 | 2016-12-02 17:00 |  | 0d |  |  |
| 176 | 1.4.3.3.2 | **Admin Module (Part 2)** |  | 6d | 2016-12-05 08:00 | 2016-12-12 17:00 | 174 | 0d |  |  |
| 177 | 1.4.3.3.2.1 | Manage User Account Feature |  | 3d | 2016-12-05 08:00 | 2016-12-07 17:00 |  | 0d |  |  |
| 178 | 1.4.3.3.2.2 | View Statistic Feature |  | 3d | 2016-12-08 08:00 | 2016-12-12 17:00 | 177 | 0d |  |  |
| 179 | 1.4.4 | **Testing** |  | 4.5d? | 2016-11-30 08:00 | 2016-12-06 12:00 | 173SS | 5d | 0d |  |
| 180 | 1.4.4.1 | Create Test Plan (Part 3) |  | 0.5d | 2016-11-30 08:00 | 2016-11-30 12:00 |  | 6.5d | 0d |  |
| 181 | 1.4.4.2 | Create Test Plan Checklist (Part 3) |  | 0.5d | 2016-11-30 13:00 | 2016-11-30 17:00 | 180 | 6.5d | 0d |  |
| 182 | 1.4.4.3 | **Writing Test Case (Part 3)** |  | 2d | 2016-12-01 08:00 | 2016-12-02 17:00 | 181 | 6.5d | 0d |  |
| 183 | 1.4.4.3.1 | Create System Module Test Case (Part 2) |  | 1d | 2016-12-01 08:00 | 2016-12-01 17:00 |  | 6.5d | 0d |  |
| 184 | 1.4.4.3.2 | Create Admin Module Test Case (Part 2) |  | 1d | 2016-12-02 08:00 | 2016-12-02 17:00 | 183 | 6.5d |  |  |
| 185 | 1.4.4.4 | Create Test Case Checklist (Part 3) |  | 1d? | 2016-12-01 08:00 | 2016-12-01 17:00 | 182SS | 5d | 0d |  |
| 186 | 1.4.4.5 | Execute Test (Part 3) |  | 2d | 2016-12-02 08:00 | 2016-12-05 17:00 | 185 | 5d | 0d |  |
| 187 | 1.4.4.6 | Create Test Report (Part 3) |  | 0.5d | 2016-12-06 08:00 | 2016-12-06 12:00 | 186 | 5d | 0d |  |
| 188 | 1.4.4.7 | Testing Part 3 Complete | milestone | 0d | 2016-12-06 12:00 | 2016-12-06 12:00 | 187 | 5d |  |  |
| 189 | 1.4.5 | Create Progress Report 3 (Part 3) |  | 0.5d | 2016-11-23 13:00 | 2016-11-23 17:00 |  | 14.5d | 0d |  |
| 190 | 1.4.6 | Submit Report 3 (Part 3) | milestone | 0d | 2016-11-23 17:00 | 2016-11-23 17:00 | 189 | 14.5d | 0d |  |
| 191 | 1.4.7 | Submit Report 4 (Part 3) | milestone | 0d | 2016-11-23 17:00 | 2016-11-23 17:00 | 190 | 14.5d |  | finish no earlier than 2016-09-15 17:00 |
| 192 | 1.4.8 | Create Quality Report (Part 3) |  | 1d? | 2016-12-06 13:00 | 2016-12-07 12:00 | 179 | 5d |  |  |
| 193 | 1.4.9 | Create Progress Report 5 (Part 3) |  | 0.5d | 2016-12-13 08:00 | 2016-12-13 12:00 | 173 | 0d |  |  |
| 194 | 1.4.10 | Submit Report 5 (Part 3) | milestone | 0d | 2016-12-13 12:00 | 2016-12-13 12:00 | 193 | 0d |  |  |
| 195 | 1.4.11 | Evaluation |  | 1d? | 2016-12-13 13:00 | 2016-12-14 12:00 | 194 | 0d |  |  |
| 196 | 1.4.12 | End Implement 3 | milestone | 0d | 2016-12-14 12:00 | 2016-12-14 12:00 | 195 | 0d |  |  |

| ID | WBS | Task | Type | Duration | Start | Finish | Predecessors | Total slack |
| --- | --- | --- | --- | --- | --- | --- | --- | --- |
| 197 | 1.5 | **Termination** |  | 8.5d | 2016-12-14 13:00 | 2016-12-26 17:00 | 154 | 0d |
| 198 | 1.5.1 | Create lession learned |  | 0.5d | 2016-12-14 13:00 | 2016-12-14 17:00 |  | 0d |
| 199 | 1.5.2 | **Final Report Document (Report 6)** |  | 2d | 2016-12-15 08:00 | 2016-12-16 17:00 | 198 | 0d |
| 200 | 1.5.2.1 | Create Final Report document |  | 2d | 2016-12-15 08:00 | 2016-12-16 17:00 |  | 0d |
| 201 | 1.5.2.2 | Create Installing Guide |  | 1d | 2016-12-15 08:00 | 2016-12-15 17:00 | 200SS | 0d |
| 202 | 1.5.2.3 | Create User Guideline |  | 1d | 2016-12-16 08:00 | 2016-12-16 17:00 | 201 | 0d |
| 203 | 1.5.2.4 | Create Project Result Assessment |  | 1d | 2016-12-15 08:00 | 2016-12-15 17:00 | 200SS | 1d |
| 204 | 1.5.2.5 | Create Slides for Final Presentation |  | 2d | 2016-12-15 08:00 | 2016-12-16 17:00 | 200SS | 0d |
| 205 | 1.5.3 | Submit all Final Documents and Source codes | milestone | 0d | 2016-12-16 17:00 | 2016-12-16 17:00 | 199 | 0d |
| 206 | 1.5.4 | **Pre-closing** |  | 4d | 2016-12-19 08:00 | 2016-12-22 17:00 | 205 | 0d |
| 207 | 1.5.4.1 | Trainning presentation |  | 4d | 2016-12-19 08:00 | 2016-12-22 17:00 |  | 0d |
| 208 | 1.5.5 | **Closing** |  | 2d | 2016-12-23 08:00 | 2016-12-26 17:00 | 206 | 0d |
| 209 | 1.5.5.1 | Presentation for Capstone Project |  | 2d | 2016-12-23 08:00 | 2016-12-26 17:00 |  | 0d |
| 210 | 1.5.5.2 | Complete Project | milestone | 0d | 2016-12-26 17:00 | 2016-12-26 17:00 | 209 | 0d |
